# caB2B_Year_2_Edit

Schedule from MS Project, 2007-08-06 to 2013-01-17, A marks actual dates.
PSPL

## Calendars

- Standard: Mon-Fri 08:00-12:00, 13:00-17:00; Sat-Sun off. Exceptions (off unless hours are given): 2007-08-15, 2007-08-28.

## Resources

| Resource |
| --- |
| chetan_patil |
| Rahul Ner |
| chandrakant_talele |
| srinath_k |
| deepak_shingan |
| atul_jawale |
| hrishikesh_rajpathak |

## Schedule

| ID | WBS | Task | Duration | Start | Finish | Predecessors | Complete | Remaining | Baseline start | Baseline finish | Baseline duration | Total slack | Free slack | Resources | Work | Actual work | Text1 |
| --- | --- | --- | --- | --- | --- | --- | --- | --- | --- | --- | --- | --- | --- | --- | --- | --- | --- |
| 1 | 1 | **caB2B Year 2** | 1421.4d? | 2007-08-06 A | 2013-01-17 |  | 5% | 1347.88d? | 2007-08-06 | 2013-01-02 | 1411d? | 0d |  |  | 10320h | 873.6h |  |
| 2 | 1.1 | **Mile Stone 1 (Aug-Sept)** | 55.4d | 2007-08-06 A | 2007-10-24 |  | 38% | 34.58d | 2007-08-06 | 2007-10-09 | 45d | 0d |  |  | 1912h | 873.6h | Aug-Sept |
| 3 | 1.1.1 | **Saved Query** | 41d | 2007-08-06 A | 2007-10-03 |  | 56% | 18.01d | 2007-08-06 | 2007-10-03 | 41d | 9.4d |  |  | 424h | 244.8h |  |
| 4 | 1.1.1.1 | query model changes | 5d | 2007-08-06 A | 2007-08-10 A |  | 100% |  | 2007-08-06 | 2007-08-10 | 5d |  |  | chetan_patil | 40h | 40h |  |
| 5 | 1.1.1.2 | specifying hibernate mappings, schema generation | 10d | 2007-08-13 A | 2007-08-29 A | 4 | 100% |  | 2007-08-13 | 2007-08-27 | 9d |  |  | chetan_patil | 88h | 88h |  |
| 6 | 1.1.1.3 | UI changes to integrate and testing | 3d | 2007-08-28 A | 2007-08-31 A | 5 | 100% |  | 2007-08-28 | 2007-08-29 | 1d |  |  | chetan_patil | 32h | 32h |  |
| 7 | 1.1.1.4 | Regenrate UI (DAG etc) from saved query | 10d | 2007-09-03 | 2007-09-14 | 6 |  |  | 2007-08-30 | 2007-09-12 | 10d | 22.4d |  | chetan_patil | 80h |  |  |
| 8 | 1.1.1.5 | **Parametrized query** | 41d | 2007-08-06 A | 2007-10-03 |  | 46% | 22.1d | 2007-08-06 | 2007-10-03 | 41d | 9.4d |  |  | 184h | 84.8h |  |
| 9 | 1.1.1.5.1 | develop wireframes | 2d | 2007-08-06 A | 2007-08-07 A |  | 100% |  | 2007-08-06 | 2007-08-07 | 2d |  |  | Rahul Ner | 16h | 16h |  |
| 10 | 1.1.1.5.2 | query model changes | 5d | 2007-08-30 A | 2007-09-05 A | 9 | 100% |  | 2007-08-30 | 2007-09-05 | 5d |  |  | chetan_patil | 40h | 40h |  |
| 11 | 1.1.1.5.3 | specifying hibernate mappings, schema generation | 3d | 2007-09-06 A | 2007-09-10 A | 10 | 100% |  | 2007-09-06 | 2007-09-10 | 3d |  |  | chetan_patil | 24h | 24h |  |
| 12 | 1.1.1.5.4 | develop screen to define parameterized query | 6d | 2007-09-17 A | 2007-09-24 | 11 | 10% | 5.4d | 2007-09-17 | 2007-09-24 | 6d | 9.4d | 0d | deepak_shingan | 48h | 4.8h |  |
| 13 | 1.1.1.5.5 | develop screen to execute parameterized query | 3d | 2007-09-25 | 2007-09-27 | 12 |  |  | 2007-09-25 | 2007-09-27 | 3d | 9.4d | 0d | deepak_shingan | 24h |  |  |
| 14 | 1.1.1.5.6 | UI changes to integrate and testing | 4d | 2007-09-28 | 2007-10-03 | 13 |  |  | 2007-09-28 | 2007-10-03 | 4d | 9.4d |  | chetan_patil | 32h |  |  |
| 15 | 1.1.2 | **Create custom data categories** | 50.4d | 2007-08-06 A | 2007-10-17 |  | 53% | 23.92d | 2007-08-06 | 2007-10-08 | 43.4d | 0d |  |  | 400h | 247.2h |  |
| 16 | 1.1.2.1 | **In experiment context** | 28d | 2007-08-06 A | 2007-09-14 A |  | 100% |  | 2007-08-06 | 2007-09-14 | 28d |  |  |  | 232h | 232h |  |
| 17 | 1.1.2.1.1 | develop wireframes | 1d | 2007-08-06 A | 2007-08-06 A |  | 100% |  | 2007-08-06 | 2007-08-06 | 1d |  |  | hrishikesh_rajpathak | 8h | 8h |  |
| 18 | 1.1.2.1.2 | deveople screen to create CDC | 7d | 2007-08-07 A | 2007-08-16 A | 17 | 100% |  | 2007-08-07 | 2007-08-16 | 7d |  |  | hrishikesh_rajpathak | 56h | 56h |  |
| 19 | 1.1.2.1.3 | design CDC backend | 7d | 2007-08-17 A | 2007-08-27 A | 18 | 100% |  | 2007-08-17 | 2007-08-27 | 7d |  |  | hrishikesh_rajpathak | 56h | 56h |  |
| 20 | 1.1.2.1.4 | saving CDC | 4d | 2007-08-28 A | 2007-09-03 A | 19 | 100% |  | 2007-08-28 | 2007-09-03 | 4d |  |  | hrishikesh_rajpathak | 40h | 40h |  |
| 21 | 1.1.2.1.5 | populating and fetching data for CDC | 8d | 2007-09-04 A | 2007-09-14 A | 20 | 100% |  | 2007-09-04 | 2007-09-14 | 8d |  |  | hrishikesh_rajpathak | 72h | 72h |  |
| 22 | 1.1.2.2 | **By Admin** | 22.4d | 2007-09-17 A | 2007-10-17 | 16 | 7% | 20.88d | 2007-09-17 | 2007-10-08 | 15.4d | 0d |  |  | 168h | 15.2h |  |
| 23 | 1.1.2.2.1 | develop wireframes | 1d | 2007-09-17 A | 2007-09-17 |  | 50% | 0.5d | 2007-09-17 | 2007-09-17 | 1d | 21.4d |  | Rahul Ner | 8h | 4h |  |
| 24 | 1.1.2.2.2 | deveople screen to create CDC | 5d | 2007-09-17 A | 2007-09-21 |  | 20% | 4d | 2007-09-17 | 2007-09-21 | 5d | 17.4d |  | hrishikesh_rajpathak | 40h | 8h |  |
| 25 | 1.1.2.2.3 | design backend | 2d | 2007-09-17 A | 2007-09-19 |  | 20% | 1.6d | 2007-09-17 | 2007-09-19 | 2d | 0d |  | srinath_k | 16h | 3.2h |  |
| 26 | 1.1.2.2.4 | coding for backend | 6d | 2007-09-19 | 2007-09-27 | 25 |  |  | 2007-09-19 | 2007-09-27 | 6d | 0d |  | hrishikesh_rajpathak | 48h |  |  |
| 27 | 1.1.2.2.5 | finding matching CDC while opeing experiment | 14d | 2007-09-27 | 2007-10-17 | 26 |  |  | 2007-09-27 | 2007-10-08 | 7d | 0d |  | srinath_k [50%] | 56h |  |  |

Notes:
- 8: This is User friendly Search for experiment data / Define category along with result view. Using this, user should be able to just define limit and get results. No need to worry about DAG, paths and no need to select the result view. / Refer to caTissue for requirments and screens. / Special Case : Category Query for a one-many attribute / (Queries like Participant with PMI = 1 and 2)
- 15: Show datalist, select subtree from data list as spreadsheet

| ID | WBS | Task | Duration | Start | Finish | Predecessors | Complete | Remaining | Baseline start | Baseline finish | Baseline duration | Total slack | Free slack | Constraint | Resources | Work | Actual work | Text1 |
| --- | --- | --- | --- | --- | --- | --- | --- | --- | --- | --- | --- | --- | --- | --- | --- | --- | --- | --- |
| 28 | 1.1.3 | **caArray support** | 31d | 2007-08-06 | 2007-09-19 |  |  |  | 2007-08-06 | 2007-09-19 | 31d | 19.4d |  |  |  | 240h |  |  |
| 29 | 1.1.3.1 | Investigate to query for large objects | 15d | 2007-08-06 | 2007-08-29 |  |  |  | 2007-08-06 | 2007-08-29 | 15d | 19.4d | 0d |  | Rahul Ner | 120h |  |  |
| 30 | 1.1.3.2 | design BDQ to save along with metadata | 15d | 2007-08-30 | 2007-09-19 | 29 |  |  | 2007-08-30 | 2007-09-19 | 15d | 19.4d |  |  | Rahul Ner | 120h |  |  |
| 31 | 1.1.4 | **New viewers (metadata based)** | 33d | 2007-08-06 A | 2007-09-21 |  | 43% | 18.87d | 2007-08-06 | 2007-09-17 | 29d | 17.4d |  |  |  | 456h | 213.6h |  |
| 32 | 1.1.4.1 | design for generic viewer | 7d | 2007-08-06 A | 2007-08-14 |  | 10% | 6.3d | 2007-08-06 | 2007-08-14 | 7d | 30.92d | 0d |  | chandrakant_talele | 56h | 5.6h |  |
| 33 | 1.1.4.2 | **Heat Map viewer** | 26d | 2007-08-16 A | 2007-09-21 | 32 | 52% | 12.48d | 2007-08-16 | 2007-09-17 | 22d | 17.4d |  |  | Rahul Ner | 400h | 208h |  |
| 34 | 1.1.4.2.1 | find appropriate 3rd party library | 13d | 2007-08-16 A | 2007-09-05 A |  | 100% |  | 2007-08-16 | 2007-08-30 | 9d |  |  |  | deepak_shingan | 104h | 104h |  |
| 35 | 1.1.4.2.2 | finalize operation to be done on heat map | 3d | 2007-09-06 | 2007-09-10 | 34 |  |  | 2007-08-31 | 2007-09-04 | 3d | 17.4d | 0d |  | deepak_shingan | 24h |  |  |
| 36 | 1.1.4.2.3 | implement heat map viewer | 9d | 2007-09-11 | 2007-09-21 | 35 |  |  | 2007-09-05 | 2007-09-17 | 9d | 17.4d |  |  | chandrakant_talele | 72h |  |  |
| 37 | 1.1.5 | **Spreadsheet Component** | 33d | 2007-08-06 A | 2007-09-21 |  | 83% | 5.74d | 2007-08-06 | 2007-09-10 | 24d | 17.4d |  |  |  | 200h | 168h |  |
| 38 | 1.1.5.1 | Export | 2d | 2007-08-06 A | 2007-08-07 A |  | 100% |  | 2007-08-06 | 2007-08-07 | 2d |  |  |  | atul_jawale | 16h | 16h |  |
| 39 | 1.1.5.2 | Specify view for Custom data category | 3d | 2007-08-08 A | 2007-08-10 A | 38 | 100% |  | 2007-08-08 | 2007-08-10 | 3d |  |  |  | atul_jawale | 24h | 24h |  |
| 40 | 1.1.5.3 | Filters like spot fire | 10d | 2007-08-13 A | 2007-08-27 A | 39 | 100% |  | 2007-08-13 | 2007-08-27 | 10d |  |  |  | atul_jawale | 80h | 80h |  |
| 41 | 1.1.5.4 | Add New ,copy ,paste | 3d | 2007-08-28 A | 2007-09-03 A | 40 | 100% |  | 2007-08-28 | 2007-09-03 | 3d |  |  |  | atul_jawale | 40h | 40h |  |
| 42 | 1.1.5.5 | Integrating in cab2b | 5d | 2007-09-17 A | 2007-09-21 | 41 | 20% | 4d | 2007-09-04 | 2007-09-10 | 5d | 17.4d |  | start no earlier than 2007-09-17 | Rahul Ner | 40h | 8h |  |
| 43 | 1.1.6 | **Providing security credentials for the data services** | 24d | 2007-09-18 | 2007-10-19 |  |  |  | 2007-08-06 | 2007-09-11 | 25d | 2.4d |  |  |  | 192h |  |  |
| 44 | 1.1.6.1 | investigate grid security features | 15d | 2007-09-18 | 2007-10-08 |  |  |  | 2007-08-06 | 2007-08-29 | 15d | 2.4d | 0d | start no earlier than 2007-09-18 | hrishikesh_rajpathak | 120h |  |  |
| 45 | 1.1.6.2 | test with catissue | 9d | 2007-10-09 | 2007-10-19 | 44 |  |  | 2007-08-30 | 2007-09-11 | 9d | 2.4d |  |  | hrishikesh_rajpathak | 72h |  |  |
| 46 | 1.1.7 | ICR | 20d | 2007-08-06 | 2007-09-04 |  |  |  | 2007-09-12 | 2007-10-09 | 20d | 33d |  |  |  |  |  |  |
| 47 | 1.1.8 | QA cycle | 5d | 2007-10-17 | 2007-10-24 | 3, 15, 28, 31, 37 |  |  |  |  |  | 0d |  |  |  |  |  |  |
| 48 | 1.2 | **Mile Stone 2** | 215d | 2007-10-24 | 2008-08-20 | 2 |  |  | 2007-10-10 | 2008-08-05 | 215d | 0d |  |  |  | 1288h |  | Oct-Nov |
| 49 | 1.2.1 | **Analytical services for micro array data** | 21d | 2007-10-24 | 2007-11-22 |  |  |  | 2007-10-10 | 2007-11-07 | 21d | 0d |  |  | Rahul Ner | 168h |  |  |
| 50 | 1.2.1.1 | Investigate on AS metadata | 9d | 2007-10-24 | 2007-11-06 |  |  |  | 2007-10-10 | 2007-10-22 | 9d | 0d |  |  |  |  |  |  |
| 51 | 1.2.1.2 | load input output model for service | 5d | 2007-11-06 | 2007-11-13 | 50 |  |  | 2007-10-23 | 2007-10-29 | 5d | 0d |  |  |  |  |  |  |
| 52 | 1.2.1.3 | test the service | 7d | 2007-11-13 | 2007-11-22 | 51 |  |  | 2007-10-30 | 2007-11-07 | 7d | 0d |  |  |  |  |  |  |

Notes:
- 30: static models for the variosu types of BQD
- 31: Annotation viewer (gene Inspector) embedded webpage - browser window (refer to FE) / Pathway browser / Literature network / heat map
- 37: Edit button (slide no 46) / copy (use clipboard) / paste (To newly added columns) / Add Column / Delete Column (Newly added columns only P2) / Always show Export/Filter options + formulas (P3) / count of distinct values
- 39: (Just a spreadsheet operations) + show all column , select the required columns
- 40: Filter on BioDataCube / count of distinct values

| ID | WBS | Task | Duration | Start | Finish | Predecessors | Baseline start | Baseline finish | Baseline duration | Total slack | Resources | Work | Text1 |
| --- | --- | --- | --- | --- | --- | --- | --- | --- | --- | --- | --- | --- | --- |
| 53 | 1.2.2 | **Define output view (3rd screen)** | 26d | 2007-11-22 | 2007-12-28 | 49 | 2007-11-08 | 2007-12-13 | 26d | 0d | Rahul Ner | 416h |  |
| 54 | 1.2.2.1 | develop wireframes | 1d | 2007-11-22 | 2007-11-23 |  | 2007-11-08 | 2007-11-08 | 1d | 0d | Rahul Ner | 8h |  |
| 55 | 1.2.2.2 | develop screen | 10d | 2007-11-23 | 2007-12-07 | 54 | 2007-11-09 | 2007-11-22 | 10d | 0d | Rahul Ner | 80h |  |
| 56 | 1.2.2.3 | chages in query generation | 15d | 2007-12-07 | 2007-12-28 | 55 | 2007-11-23 | 2007-12-13 | 15d | 0d | Rahul Ner | 120h |  |
| 57 | 1.2.3 | Convert 3D to 2D data | 22d | 2007-12-28 | 2008-01-29 | 53 | 2007-12-14 | 2008-01-14 | 22d | 0d | Rahul Ner | 176h |  |
| 58 | 1.2.4 | Creating and save categories | 15d | 2008-01-29 | 2008-02-19 | 57 | 2008-01-15 | 2008-02-04 | 15d | 0d | Rahul Ner | 120h |  |
| 59 | 1.2.5 | Automated down load of caDSR models | 22d | 2008-02-19 | 2008-03-20 | 58 | 2008-02-05 | 2008-03-05 | 22d | 0d | Rahul Ner | 176h |  |
| 60 | 1.2.6 | Connecting two categories | 7d | 2008-03-20 | 2008-03-31 | 59 | 2008-03-06 | 2008-03-14 | 7d | 0d | Rahul Ner | 56h |  |
| 61 | 1.2.7 | New viewers (metadata based) | 22d | 2008-03-31 | 2008-04-30 | 60 | 2008-03-17 | 2008-04-15 | 22d | 0d | Rahul Ner | 176h |  |
| 62 | 1.2.8 | ICR | 80d | 2008-04-30 | 2008-08-20 | 61 | 2008-04-16 | 2008-08-05 | 80d | 0d |  |  |  |
| 63 | 1.3 | **Mile Stone 3** | 212d | 2008-08-20 | 2009-06-12 | 48 | 2008-08-06 | 2009-05-28 | 212d | 0d |  | 1376h | Dec-Jan |
| 64 | 1.3.1 | configuration of service/instance to query | 22d | 2008-08-20 | 2008-09-19 |  | 2008-08-06 | 2008-09-04 | 22d | 0d | Rahul Ner | 176h |  |
| 65 | 1.3.2 | caArray category | 45d | 2008-09-19 | 2008-11-21 | 64 | 2008-09-05 | 2008-11-06 | 45d | 0d | Rahul Ner | 360h |  |
| 66 | 1.3.3 | Remove client jar dependency for Analytical services (AS) | 35d | 2008-11-21 | 2009-01-09 | 65 | 2008-11-07 | 2008-12-25 | 35d | 0d | Rahul Ner | 280h |  |
| 67 | 1.3.4 | Ability to configure the applications used for metadata serach | 18d | 2009-01-09 | 2009-02-04 | 66 | 2008-12-26 | 2009-01-20 | 18d | 0d | Rahul Ner | 144h |  |
| 68 | 1.3.5 | pre-defined filters on attributes | 15d | 2009-02-04 | 2009-02-25 | 67 | 2009-01-21 | 2009-02-10 | 15d | 0d | Rahul Ner | 120h |  |
| 69 | 1.3.6 | Join data list (data category) | 15d | 2009-02-25 | 2009-03-18 | 68 | 2009-02-11 | 2009-03-03 | 15d | 0d | Rahul Ner | 120h |  |
| 70 | 1.3.7 | New viewers (metadata based) | 22d | 2009-03-18 | 2009-04-17 | 69 | 2009-03-04 | 2009-04-02 | 22d | 0d | Rahul Ner | 176h |  |
| 71 | 1.3.8 | ICR | 40d | 2009-04-17 | 2009-06-12 | 70 | 2009-04-03 | 2009-05-28 | 40d | 0d |  |  |  |
| 72 | 1.4 | **Mile Stone 4** | 222d | 2009-06-12 | 2010-04-20 | 63 | 2009-05-29 | 2010-04-05 | 222d | 0d |  | 1616h | Feb-Mar |
| 73 | 1.4.1 | Relevance based searched | 35d | 2009-06-12 | 2009-07-31 |  | 2009-05-29 | 2009-07-16 | 35d | 0d | Rahul Ner | 280h |  |
| 74 | 1.4.2 | Return derived classes when searched for base class | 30d | 2009-07-31 | 2009-09-11 | 73 | 2009-07-17 | 2009-08-27 | 30d | 0d | Rahul Ner | 240h |  |
| 75 | 1.4.3 | Asynchronous execution of query | 45d | 2009-09-11 | 2009-11-13 | 74 | 2009-08-28 | 2009-10-29 | 45d | 0d | Rahul Ner | 360h |  |
| 76 | 1.4.4 | Authentication with our own IDP | 30d | 2009-11-13 | 2009-12-25 | 75 | 2009-10-30 | 2009-12-10 | 30d | 0d | Rahul Ner | 240h |  |
| 77 | 1.4.5 | Curating path | 30d | 2009-12-25 | 2010-02-05 | 76 | 2009-12-11 | 2010-01-21 | 30d | 0d | Rahul Ner | 240h |  |
| 78 | 1.4.6 | New viewers (metadata based) | 22d | 2010-02-05 | 2010-03-09 | 77 | 2010-01-22 | 2010-02-22 | 22d | 0d | Rahul Ner | 176h |  |
| 79 | 1.4.7 | Incorporate UE Review comments till date Part 1 | 20d | 2010-03-09 | 2010-04-06 | 78 | 2010-02-23 | 2010-03-22 | 20d | 0d |  |  |  |
| 80 | 1.4.8 | Define URLs for selected data for browser window viewer | 10d | 2010-04-06 | 2010-04-20 | 79 | 2010-03-23 | 2010-04-05 | 10d | 0d | Rahul Ner | 80h |  |

Notes:
- 53: It copies the original DAG build using conditions and allows user to specify more classes needed as output. It is similar to tissue core. Admin won't define view for each category. It will be smartly determined by the application. User can mark a node as "Present in view" Or "Not present in view". We need to decide should user be able to delete his limits (nodes) while defining view
- 57: S-> molecular Event1 and 2 show then as spreadsheet with row as specimen1,2,3 and columns as ME1 col1, ME1 col2,ME2 col1, ME2 col2, This is only for one level in tree (association)
- 58: It it similar to parameterixed query, screen will be similar to add limit page / UE to change slide 72, it should be similar to parametrized query
- 59: Admin will be shown all avalible models using discovery. Then selected models will be loaded
- 60: DAG like view where two graphs are shown in DAG and they will be connected by pairing classes from one category to eac class in other category
- 64: With setting for: Admin, User, Query / Configurin service URL, caB2B clinet URL etc.Ability to configure the applications used for metadata serach
- 66: Get a generic way to invoke AS similar to data services
- 67: Limited by only available services. Also is no instance is configured by admin and user then model for that instance won't searched in metadata. Even though metadata serach is performed on some specific models, user can also view experiments which has data from some other models
- 68: UE edit slide 78 , refer to caTissue for details
- 69: Connecting two datalist based on CDE match, put 2 dropdowns on slide 6 for showing classes OR put attributes + class. / This should be important in joining custom data category. Put a dropdown for Equals and not equals
- 73: Explorer and use Lucene / For entered search string, get synonyms and search for those also. Get synonyms from grid (EVS)
- 75: Asynchronous queres and their results are always saved (System-saved) Later on user can save them expliciltly or can delete it.
- 77: Along with curating, copy curated paths across different application versions

| ID | WBS | Task | Duration | Start | Finish | Predecessors | Baseline start | Baseline finish | Baseline duration | Total slack | Resources | Work | Text1 |
| --- | --- | --- | --- | --- | --- | --- | --- | --- | --- | --- | --- | --- | --- |
| 81 | 1.5 | **Mile Stone 5** | 365d | 2010-04-20 | 2011-09-13 | 72 | 2010-04-06 | 2011-08-29 | 365d | 0d |  | 2680h | NA |
| 82 | 1.5.1 | View the existing data list | 22d | 2010-04-20 | 2010-05-20 |  | 2010-04-06 | 2010-05-05 | 22d | 0d | Rahul Ner | 176h |  |
| 83 | 1.5.2 | Paths between categories and class | 35d | 2010-05-20 | 2010-07-08 | 82 | 2010-05-06 | 2010-06-23 | 35d | 0d | Rahul Ner | 280h |  |
| 84 | 1.5.3 | Create Experiments from the multiple existing data list. | 10d | 2010-07-08 | 2010-07-22 | 83 | 2010-06-24 | 2010-07-07 | 10d | 0d | Rahul Ner | 80h |  |
| 85 | 1.5.4 | User friendly names for records | 15d | 2010-07-22 | 2010-08-12 | 84 | 2010-07-08 | 2010-07-28 | 15d | 0d | Rahul Ner | 120h |  |
| 86 | 1.5.5 | parenthesis in DAG | 35d | 2010-08-12 | 2010-09-30 | 85 | 2010-07-29 | 2010-09-15 | 35d | 0d | Rahul Ner | 280h |  |
| 87 | 1.5.6 | Popularity Paths, categories | 18d | 2010-09-30 | 2010-10-26 | 86 | 2010-09-16 | 2010-10-11 | 18d | 0d | Rahul Ner | 144h |  |
| 88 | 1.5.7 | Edit used path (overriding curated/selected paths) | 10d | 2010-10-26 | 2010-11-09 | 87 | 2010-10-12 | 2010-10-25 | 10d | 0d | Rahul Ner | 80h |  |
| 89 | 1.5.8 | Define Attribute view | 10d | 2010-11-09 | 2010-11-23 | 88 | 2010-10-26 | 2010-11-08 | 10d | 0d | Rahul Ner | 80h |  |
| 90 | 1.5.9 | Highlight matched words in search results | 10d | 2010-11-23 | 2010-12-07 | 89 | 2010-11-09 | 2010-11-22 | 10d | 0d | Rahul Ner | 80h |  |
| 91 | 1.5.10 | Incorporate UE Review comments till date Part 2 | 30d | 2010-12-07 | 2011-01-18 | 90 | 2010-11-23 | 2011-01-03 | 30d | 0d |  |  |  |
| 92 | 1.5.11 | Partial auto connect | 45d | 2011-01-18 | 2011-03-22 | 91 | 2011-01-04 | 2011-03-07 | 45d | 0d | Rahul Ner | 360h |  |
| 93 | 1.5.12 | Authentication with other IDP | 15d | 2011-03-22 | 2011-04-12 | 92 | 2011-03-08 | 2011-03-28 | 15d | 0d | Rahul Ner | 120h |  |
| 94 | 1.5.13 | Smart metadata search (Merge CDEs across versions of same application) | 45d | 2011-04-12 | 2011-06-14 | 93 | 2011-03-29 | 2011-05-30 | 45d | 0d | Rahul Ner | 360h |  |
| 95 | 1.5.14 | Delete data to existing experiment | 15d | 2011-06-14 | 2011-07-05 | 94 | 2011-05-31 | 2011-06-20 | 15d | 0d | Rahul Ner | 120h |  |
| 96 | 1.5.15 | Add data to existing experiment | 15d | 2011-07-05 | 2011-07-26 | 95 | 2011-06-21 | 2011-07-11 | 15d | 0d | Rahul Ner | 120h |  |
| 97 | 1.5.16 | While creating data list, ability to add only selected attributes of records | 35d | 2011-07-26 | 2011-09-13 | 96 | 2011-07-12 | 2011-08-29 | 35d | 0d | Rahul Ner | 280h |  |
| 98 | 1.6 | **Mile Stone 6** | 252d | 2011-09-13 | 2012-08-30 | 81 | 2011-08-30 | 2012-08-15 | 252d | 0d |  | 1416h | NA |
| 99 | 1.6.1 | Copy/Move experiment | 15d | 2011-09-13 | 2011-10-04 |  | 2011-08-30 | 2011-09-19 | 15d | 0d | Rahul Ner | 120h |  |
| 100 | 1.6.2 | Upgrade technology stack as per caBIG | 45d | 2011-10-04 | 2011-12-06 | 99 | 2011-09-20 | 2011-11-21 | 45d | 0d | Rahul Ner | 360h |  |
| 101 | 1.6.3 | Keyboard support for application | 45d | 2011-12-06 | 2012-02-07 | 100 | 2011-11-22 | 2012-01-23 | 45d | 0d |  |  |  |
| 102 | 1.6.4 | Automatic resize of application UI for all resolution | 30d | 2012-02-07 | 2012-03-20 | 101 | 2012-01-24 | 2012-03-05 | 30d | 0d |  |  |  |
| 103 | 1.6.5 | Defining category group | 22d | 2012-03-20 | 2012-04-19 | 102 | 2012-03-06 | 2012-04-04 | 22d | 0d | Rahul Ner | 176h |  |
| 104 | 1.6.6 | Advance view | 35d | 2012-04-19 | 2012-06-07 | 103 | 2012-04-05 | 2012-05-23 | 35d | 0d | Rahul Ner | 280h |  |
| 105 | 1.6.7 | Incorporate pending UE comments | 60d | 2012-06-07 | 2012-08-30 | 104 | 2012-05-24 | 2012-08-15 | 60d | 0d | Rahul Ner | 480h |  |

Notes:
- 84: Slide 61-65
- 85: Instead of participant_1 show Smith Merry
- 89: Ability to define order in which attributes will be displayed in Add limit and result detailed page
- 90: Highlight matched words from description/name, / Highlight matched attributes in add limit page / Select matched Permissible values, / Select matched concept codes / For public id and Cocnept code show Hyper link to caDSR
- 94: Three versions of caTissue should not lead to metadata search showing 3 participant if its CDE is same in each instance, And if shown once query all three instances
- 97: what about the service that expect data fully populated ?
- 101: For entire application whereever possible like buttons,tab-ed navigation through search results
- 102: Current implementation is for target resolution 1024x768. If application is used on higher resolutions, component size does not get adjusted automatically. i.e box of size 200 pixel on 1024x768 takes 200 pixels on 1280x960
- 104: advance tab on result screen(4) / Not important as per discussion with Srikanth, Rakesh

| ID | WBS | Task | Type | Duration | Start | Finish | Predecessors | Baseline start | Baseline finish | Baseline duration | Total slack | Free slack | Resources | Work | Text1 |
| --- | --- | --- | --- | --- | --- | --- | --- | --- | --- | --- | --- | --- | --- | --- | --- |
| 106 | 1.7 | **Documentaion** |  | 100d | 2012-08-30 | 2013-01-17 | 105 | 2012-08-16 | 2013-01-02 | 100d | 0d |  |  |  | Apr W1 W2 W3 |
| 107 | 1.7.1 | User manual |  | 35d | 2012-08-30 | 2012-10-18 |  | 2012-08-16 | 2012-10-03 | 35d | 0d |  |  |  |  |
| 108 | 1.7.2 | Design document |  | 35d | 2012-10-18 | 2012-12-06 | 107 | 2012-10-04 | 2012-11-21 | 35d | 0d |  |  |  |  |
| 109 | 1.7.3 | Lesson learned document |  | 15d | 2012-12-06 | 2012-12-27 | 108 | 2012-11-22 | 2012-12-12 | 15d | 0d |  |  |  |  |
| 110 | 1.7.4 | Web site update |  | 15d | 2012-12-27 | 2013-01-17 | 109 | 2012-12-13 | 2013-01-02 | 15d | 0d |  |  |  |  |
| 111 | 1.8 | **Release activities** |  | 134d | 2007-08-06 | 2008-02-11 |  | 2007-08-06 | 2008-02-11 | 134d | 1287.4d |  |  |  | Apr W4-May |
| 112 | 1.8.1 | internal QA cycle |  | 30d | 2007-08-06 | 2007-09-18 |  | 2007-08-06 | 2007-09-18 | 30d | 1287.4d | 0d |  |  |  |
| 113 | 1.8.2 | bug fixing |  | 45d | 2007-09-19 | 2007-11-20 | 112 | 2007-09-19 | 2007-11-20 | 45d | 1287.4d | 0d |  |  |  |
| 114 | 1.8.3 | beta release |  | 7d | 2007-11-21 | 2007-11-29 | 113 | 2007-11-21 | 2007-11-29 | 7d | 1287.4d | 0d |  |  |  |
| 115 | 1.8.4 | Testing by end users | milestone | 0d | 2007-11-29 | 2007-11-29 | 114 | 2007-11-29 | 2007-11-29 | 0d | 1287.4d | 0d |  |  |  |
| 116 | 1.8.5 | bug fixing (beta and end user bugs) |  | 45d | 2007-11-30 | 2008-01-31 | 115 | 2007-11-30 | 2008-01-31 | 45d | 1287.4d | 0d |  |  |  |
| 117 | 1.8.6 | final release |  | 7d | 2008-02-01 | 2008-02-11 | 116 | 2008-02-01 | 2008-02-11 | 7d | 1287.4d |  |  |  |  |
| 118 | 1.9 | **Performance** |  | 1d? | 2007-08-06 | 2007-08-06 |  | 2007-08-06 | 2007-08-06 | 1d? | 1420.4d |  |  | 32h | Unable to estimate |
| 119 | 1.9.1 | WS enumeration |  | 1d? | 2007-08-06 | 2007-08-06 |  | 2007-08-06 | 2007-08-06 | 1d? | 1420.4d |  | Rahul Ner | 8h |  |
| 120 | 1.9.2 | High throughput workgroup |  | 1d? | 2007-08-06 | 2007-08-06 |  | 2007-08-06 | 2007-08-06 | 1d? | 1420.4d |  | Rahul Ner | 8h |  |
| 121 | 1.9.3 | Explore caGrid FTP |  | 1d? | 2007-08-06 | 2007-08-06 |  | 2007-08-06 | 2007-08-06 | 1d? | 1420.4d |  | Rahul Ner | 8h |  |
| 122 | 1.9.4 | Develop prototype for compomnets for performance issues |  | 1d? | 2007-08-06 | 2007-08-06 |  | 2007-08-06 | 2007-08-06 | 1d? | 1420.4d |  | Rahul Ner | 8h |  |
